# Gantt Chart Revision Old

Schedule from MS Project, 2015-01-05 to 2015-04-10.
Grizli777

## Calendars

- Standard: Mon-Fri 08:00-12:00, 13:00-17:00; Sat-Sun off.

## Resources

| Resource | Group |
| --- | --- |
| Chris | Chris |
| Tim | Tim |
| Luis | Luis |
| Kevin | Kevin |
| All | All |

## Schedule

| ID | WBS | Task | Type | Duration | Start | Finish | Predecessors | Resources | Work |
| --- | --- | --- | --- | --- | --- | --- | --- | --- | --- |
| 1 | 1 | Get HAM Licenses | manual | 1d | 2015-01-29 | 2015-01-29 |  |  |  |
| 2 | 2 | **Antenna Research** |  | 20d | 2015-01-05 | 2015-01-30 |  | Chris | 336h |
| 3 | 2.1 | Learn 4Nec2 Software (or other NEC based software) | manual | 10d | 2015-01-05 | 2015-01-16 |  | Chris | 80h |
| 4 | 2.2 | Complete simulations of previous designs | manual | 6d | 2015-01-19 | 2015-01-26 | 3 | Chris | 48h |
| 5 | 2.3 | Simlate New Shively Model | manual | 6d | 2015-01-19 | 2015-01-26 | 3 | Chris | 48h |
| 6 | 3 | **Echo/AllStar Research** |  | 25d | 2015-01-05 | 2015-02-06 |  | Luis; Tim | 608h |
| 7 | 3.1 | Research ARM Dev Boards | manual | 5d | 2015-01-05 | 2015-01-09 |  | Luis; Tim | 80h |
| 8 | 3.2 | Research Echolink and IRLP Protocols | manual | 4d | 2015-01-12 | 2015-01-15 | 7 | Luis | 32h |
| 9 | 3.3 | Research IRLP Board Designs | manual | 4d | 2015-01-15 | 2015-01-20 |  | Luis | 32h |
| 10 | 3.4 | compile list of implementation options for Echolink | manual | 3d | 2015-01-16 | 2015-01-20 | 8 | Tim | 24h |
| 11 | 3.5 | Produce list of possible audio codecs | manual | 3d | 2015-01-26 | 2015-01-28 | 10 | Tim | 24h |
| 12 | 3.6 | Decide between Allstar and IRLP | manual | 2d | 2015-01-27 | 2015-01-28 |  | All | 16h |
| 13 | 4 | **DTMF Research** |  | 20d | 2015-01-05 | 2015-01-30 |  |  | 120h |
| 14 | 4.1 | Review/Test Last Year's Design | manual | 7d | 2015-01-05 | 2015-01-13 |  | Kevin | 56h |
| 15 | 4.2 | Figure out bugs with previous design | manual | 3d | 2015-01-14 | 2015-01-16 | 14 | Kevin | 24h |
| 16 | 4.3 | Research switching system | manual | 5d | 2015-01-12 | 2015-01-16 |  | Kevin | 40h |
| 17 | 5 | **Antenna Design/Implementation** |  | 50d | 2015-02-02 | 2015-04-10 |  | Chris | 864h |
| 18 | 5.1 | Optimize Radiation Pattern and Gain for New Design | manual | 4d | 2015-01-27 | 2015-01-30 |  | Chris | 32h |
| 19 | 5.2 | Design Multiple Antenna Models??? | manual | 5d | 2015-01-26 | 2015-01-30 |  | Chris | 40h |
| 20 | 5.3 | Decide on antenna design | manual | 4d | 2015-02-02 | 2015-02-05 | 19, 18 | All | 32h |
| 21 | 5.4 | Locate Troublesome Areas via Simulation | manual | 7d | 2015-02-05 | 2015-02-13 |  | Chris | 56h |
| 22 | 5.5 | Research materials for antenna design | manual | 4d | 2015-02-06 | 2015-02-11 | 20 | Chris | 32h |
| 23 | 5.6 | Construct BOM/Order parts | manual | 2d | 2015-02-12 | 2015-02-13 | 22 | Chris | 16h |
| 24 | 5.7 | Construct Prototype v1.0 | manual | 5d | 2015-02-16 | 2015-02-20 | 23 | Chris | 40h |
| 25 | 5.8 | Design Impedance matching Network | manual | 5d | 2015-02-23 | 2015-02-27 |  | Chris | 40h |
| 26 | 5.9 | Test Prototyp in Lab | manual | 4d | 2015-02-23 | 2015-02-26 | 24 | Chris | 32h |
| 27 | 5.10 | Mount Antenna | manual | 5d | 2015-02-27 | 2015-03-05 | 26 | Chris | 40h |
| 28 | 5.11 | Make Revisions/Construct v1.1 | manual | 5d | 2015-03-17 | 2015-03-23 | 31 | Chris | 40h |
| 29 | 5.12 | Additional Revisions? | manual | 8d | 2015-03-31 | 2015-04-09 | 32 | Chris | 64h |

| ID | WBS | Task | Type | Duration | Start | Finish | Predecessors | Resources | Work |
| --- | --- | --- | --- | --- | --- | --- | --- | --- | --- |
| 30 | 6 | **Antenna Testing** |  | 17d | 2015-03-05 | 2015-03-27 |  | All | 224h |
| 31 | 6.1 | Field Test Vpol VS Cpol | manual | 7d | 2015-03-06 | 2015-03-16 | 27 | All | 56h |
| 32 | 6.2 | Field Test v1.1 | manual | 4d | 2015-03-24 | 2015-03-27 | 28 | All | 32h |
| 33 | 7 | **Echo/Allstar Design Implementation** |  | 46d | 2015-01-19 | 2015-03-23 |  |  | 544h |
| 34 | 7.1 | Decide on design for Echolink/AllStar nodes | manual | 3d | 2015-01-23 | 2015-01-27 | 10 | All | 24h |
| 35 | 7.2 | Decide on & order Audio Codec | manual | 3d | 2015-02-19 | 2015-02-23 |  | All; Tim | 48h |
| 36 | 7.3 | Finish Preliminary Design for Linking Interface (Full Schematic Level) | manual | 5d | 2015-02-17 | 2015-02-23 |  | Tim | 40h |
| 37 | 7.4 | Finish Linking Interface Capture | manual | 3d | 2015-02-24 | 2015-02-26 | 36 | Tim | 24h |
| 38 | 7.5 | Finish Linking Interface Layout | manual | 4d | 2015-02-27 | 2015-03-04 | 37 | Tim | 32h |
| 39 | 7.6 | Construct BOM/Order parts | manual | 3d | 2015-03-06 | 2015-03-10 | 38 | Tim | 24h |
| 40 | 7.7 | Construct Linking Interface Prototype | manual | 4d | 2015-03-11 | 2015-03-16 |  | Tim | 32h |
| 41 | 7.8 | Design Preliminary Linking Interface Case | manual | 4d | 2015-03-17 | 2015-03-20 |  | Tim | 32h |
| 42 | 7.9 | Integrate Linking Interface with DTMF Controller | manual | 2d | 2015-03-16 | 2015-03-17 |  | Tim | 16h |
| 43 | 7.10 | Decide on SBC for Allstar (and ORDER it!) | manual | 4d | 2015-02-17 | 2015-02-20 |  | All | 32h |
| 44 | 7.11 | Finish Asterisk/app-rpt installation | manual | 4d | 2015-02-26 | 2015-03-03 |  | Luis | 32h |
| 45 | 7.12 | Aquire AllStar Node Number? | manual | 2d | 2015-03-02 | 2015-03-03 |  | Luis | 16h |
| 46 | 7.13 | Get working AllStar Node | manual | 2d | 2015-03-04 | 2015-03-05 | 45 | Luis | 16h |
| 47 | 7.14 | Finish Script for PTT control signals between nodes | manual | 3d | 2015-03-06 | 2015-03-10 | 46 | Luis | 24h |
| 48 | 7.15 | Integrate AllStar and Echolink nodes with Interface | manual | 3d | 2015-03-16 | 2015-03-18 | 45 | Tim | 24h |
| 49 | 7.16 | Have node/DTMF system up and running | manual | 3d | 2015-03-18 | 2015-03-20 |  | Luis; Tim | 48h |
| 50 | 7.17 | Complete Solidworks Model of Node System Case | manual | 4d | 2015-03-09 | 2015-03-12 |  | Luis | 32h |
| 51 | 7.18 | Construct BOM, and Order Parts for Node System Case | manual | 2d | 2015-03-13 | 2015-03-16 | 50 | Luis | 16h |
| 52 | 7.19 | Finish Construction of Node System Case Prototype | manual | 4d | 2015-03-17 | 2015-03-20 | 51 | Luis | 32h |
| 53 | 8 | **Echo/AllStar Testing** |  | 25d | 2015-02-23 | 2015-03-27 |  |  | 216h |
| 54 | 8.1 | Test Echolink and AllStar Nodes | manual | 3d | 2015-02-27 | 2015-03-03 | 1 | Luis; Tim | 48h |
| 55 | 8.2 | Offsite test nodes, and switching system | manual | 8d | 2015-03-04 | 2015-03-13 | 54 | All | 64h |
| 56 | 8.3 | Make revisions/Construct v1.1 | manual | 3d | 2015-03-16 | 2015-03-18 | 55 | Luis; Tim | 48h |
| 57 | 8.4 | Offsite test v1.1 nodes, and switching system | manual | 7d | 2015-03-19 | 2015-03-27 | 56 | All | 56h |

| ID | WBS | Task | Type | Duration | Start | Finish | Predecessors | Resources | Work |
| --- | --- | --- | --- | --- | --- | --- | --- | --- | --- |
| 58 | 9 | **DTMF/Switching Circuit Design/Implementation** |  | 51d | 2015-01-19 | 2015-03-30 |  | Kevin; Luis; Tim | 1832h |
| 59 | 9.1 | Finish DTMF Controller Capture | manual | 3d | 2015-02-17 | 2015-02-19 |  | Luis | 24h |
| 60 | 9.2 | Finish DTMF Controller Layout | manual | 3d | 2015-02-20 | 2015-02-24 |  | Luis | 24h |
| 61 | 9.3 | Construct DTMF Controller BOM and Order Parts | manual | 2d | 2015-02-25 | 2015-02-26 |  | Luis | 16h |
| 62 | 9.4 | Construct prototype DTMF controller | manual | 3d | 2015-02-27 | 2015-03-03 |  | Luis | 24h |
| 63 | 9.5 | Choose switch components | manual | 2d | 2015-01-15 | 2015-01-16 |  | Kevin | 16h |
| 64 | 9.6 | Design Switching Circuit | manual | 5d | 2015-01-20 | 2015-01-26 | 63 | Kevin | 40h |
| 65 | 9.7 | Finish Switching Circuit Capture | manual | 5d | 2015-02-02 | 2015-02-06 | 64 | Kevin | 40h |
| 66 | 9.8 | Finish Switching Circuit Layout | manual | 5d | 2015-02-09 | 2015-02-13 |  | Kevin | 40h |
| 67 | 9.9 | Construct Switching Circuit BOM/Order parts | manual | 4d | 2015-02-16 | 2015-02-19 | 65 | Kevin | 32h |
| 68 | 9.10 | Construct prototype switching board | manual | 4d | 2015-02-20 | 2015-02-25 | 67 | Kevin | 32h |
| 69 | 9.11 | Finish Preliminary Solidworks Design For Switch, DTMF Controller Casees | manual | 3d | 2015-03-09 | 2015-03-11 |  | Kevin | 24h |
| 70 | 9.12 | Construct BOM, and Order Parts Switch/DTMF System Cases | manual | 2d | 2015-03-12 | 2015-03-13 | 69 | Kevin | 16h |
| 71 | 9.13 | Finish Construction of Switch/DTMF Case Prototypes | manual | 4d | 2015-03-17 | 2015-03-20 | 70 | Kevin | 32h |
| 72 | 9.14 | Complete NEW DTMF controller software v1.0 | manual | 6d | 2015-02-04 | 2015-02-11 |  | Tim | 48h |
| 73 | 9.15 | Integrate Switching Sircuit with DTMF Controller | manual | 5d | 2015-02-26 | 2015-03-04 |  | Kevin; Luis | 80h |
| 74 | 9.16 | Make Revisions/Construct v1.1 | manual | 5d | 2015-03-09 | 2015-03-13 | 77 | Kevin; Luis; Tim | 120h |
| 75 | 10 | **DTMF Testing** |  | 8d | 2015-03-09 | 2015-03-18 |  |  |  |
| 76 | 10.1 | Test prototype DTMF and switch | manual | 3d | 2015-02-12 | 2015-02-16 | 62, 68 |  |  |
| 77 | 10.2 | Offsite test nodes, and switching system | manual | 8d | 2015-02-25 | 2015-03-06 |  |  |  |
