# Gantt Chart RevisionNEW

Schedule from MS Project, 2015-01-05 to 2015-04-25.
Grizli777

## Calendars

- Standard: Mon-Fri 08:00-12:00, 13:00-17:00; Sat-Sun off.

## Resources

| Resource | Group |
| --- | --- |
| Chris | Chris |
| Tim | Tim |
| Luis | Luis |
| Kevin | Kevin |
| All | All |

## Schedule

| ID | WBS | Task | Type | Duration | Start | Finish | Predecessors | Resources | Work |
| --- | --- | --- | --- | --- | --- | --- | --- | --- | --- |
| 1 | 1 | Get HAM Licenses | manual | 1d | 2015-01-29 | 2015-01-29 |  |  |  |
| 2 | 2 | **Antenna Research** |  | 20d | 2015-01-05 | 2015-01-30 |  | Chris | 336h |
| 3 | 2.1 | Learn 4Nec2 Software (or other NEC based software) | manual | 10d | 2015-01-05 | 2015-01-16 |  | Chris | 80h |
| 4 | 2.2 | Complete simulations of previous designs | manual | 6d | 2015-01-19 | 2015-01-26 | 3 | Chris | 48h |
| 5 | 2.3 | Simlate New Shively Model | manual | 6d | 2015-01-19 | 2015-01-26 | 3 | Chris | 48h |
| 6 | 3 | **Echo/AllStar Research** |  | 25d | 2015-01-05 | 2015-02-06 |  | Luis; Tim | 608h |
| 7 | 3.1 | Research ARM Dev Boards | manual | 5d | 2015-01-05 | 2015-01-09 |  | Luis; Tim | 80h |
| 8 | 3.2 | Research Echolink and IRLP Protocols | manual | 4d | 2015-01-12 | 2015-01-15 | 7 | Luis | 32h |
| 9 | 3.3 | Research IRLP Board Designs | manual | 4d | 2015-01-15 | 2015-01-20 |  | Luis | 32h |
| 10 | 3.4 | compile list of implementation options for Echolink | manual | 3d | 2015-01-16 | 2015-01-20 | 8 | Tim | 24h |
| 11 | 3.5 | Produce list of possible audio codecs | manual | 3d | 2015-01-26 | 2015-01-28 | 10 | Tim | 24h |
| 12 | 3.6 | Decide between Allstar and IRLP | manual | 2d | 2015-01-27 | 2015-01-28 |  | All | 16h |
| 13 | 4 | **DTMF Research** |  | 20d | 2015-01-05 | 2015-01-30 |  |  | 120h |
| 14 | 4.1 | Review/Test Last Year's Design | manual | 7d | 2015-01-05 | 2015-01-13 |  | Kevin | 56h |
| 15 | 4.2 | Figure out bugs with previous design | manual | 3d | 2015-01-14 | 2015-01-16 | 14 | Kevin | 24h |
| 16 | 4.3 | Research switching system | manual | 5d | 2015-01-12 | 2015-01-16 |  | Kevin | 40h |
| 17 | 5 | **Antenna Design/Implementation** |  | 55d | 2015-02-02 | 2015-04-17 |  | Chris | 808h |
| 18 | 5.1 | Optimize Radiation Pattern and Gain for New Design | manual | 4d | 2015-01-27 | 2015-01-30 |  | Chris | 32h |
| 19 | 5.2 | Design Multiple Antenna Models??? | manual | 5d | 2015-01-26 | 2015-01-30 |  | Chris | 40h |
| 20 | 5.3 | Decide on antenna design | manual | 4d | 2015-02-02 | 2015-02-05 | 19, 18 | All | 32h |
| 21 | 5.4 | Locate Troublesome Areas via Simulation | manual | 7d | 2015-02-05 | 2015-02-13 |  | Chris | 56h |
| 22 | 5.5 | Research materials for antenna design | manual | 4d | 2015-02-06 | 2015-02-11 | 20 | Chris | 32h |
| 23 | 5.6 | Construct BOM/Order parts | manual | 2d | 2015-02-12 | 2015-02-13 | 22 | Chris | 16h |
| 24 | 5.7 | Construct Prototype v1.0 | manual | 5d | 2015-02-16 | 2015-02-20 | 23 | Chris | 40h |
| 25 | 5.8 | Take Impedance Measurements | manual | 2d | 2015-02-20 | 2015-02-21 |  |  |  |
| 26 | 5.9 | Finish Balun Design | manual | 5d | 2015-02-23 | 2015-02-27 |  |  |  |
| 27 | 5.10 | Design Impedance matching Network | manual | 5d | 2015-03-02 | 2015-03-06 | 25, 26 | Chris | 40h |
| 28 | 5.11 | Finish Antenna Mounting System Design | manual | 5d | 2015-02-23 | 2015-02-27 |  |  |  |
| 29 | 5.12 | Mount Antenna | manual | 2d | 2015-03-09 | 2015-03-10 | 28, 27, 35 | Chris | 16h |
| 30 | 5.13 | Make Revisions/Construct v1.1 | manual | 3d | 2015-03-17 | 2015-03-19 | 37 | Chris | 24h |
| 31 | 5.14 | Construct 2nd Antenna For Stacking | manual | 4d | 2015-03-20 | 2015-03-25 |  |  |  |
| 32 | 5.15 | Mount New Antenna(s) | manual | 3d | 2015-03-30 | 2015-04-01 |  |  |  |
| 33 | 5.16 | Additional Revisions? | manual | 5d | 2015-04-08 | 2015-04-14 | 38 | Chris | 40h |

| ID | WBS | Task | Type | Duration | Start | Finish | Predecessors | Resources | Work |
| --- | --- | --- | --- | --- | --- | --- | --- | --- | --- |
| 34 | 6 | **Antenna Testing** |  | 32d | 2015-03-05 | 2015-04-17 |  | All | 352h |
| 35 | 6.1 | Finish Initial Lab Testing of Antenna | manual | 5d | 2015-02-23 | 2015-02-27 | 24 | Chris | 40h |
| 36 | 6.2 | Finish Lab Testing of Antenna With Impedance Matchcing Network | manual | 5d | 2015-03-02 | 2015-03-06 |  |  |  |
| 37 | 6.3 | Field Test Vpol VS Cpol | manual | 3d | 2015-03-12 | 2015-03-16 | 29 | All | 24h |
| 38 | 6.4 | Field Test Stacked Antennas | manual | 4d | 2015-04-02 | 2015-04-07 | 30 | All | 32h |
| 39 | 7 | **Echo/Allstar Design Implementation** |  | 70d | 2015-01-19 | 2015-04-24 |  |  | 632h |
| 40 | 7.1 | Decide on design for Echolink/AllStar nodes | manual | 3d | 2015-01-23 | 2015-01-27 | 10 | All | 24h |
| 41 | 7.2 | Decide on & order Audio Codec | manual | 3d | 2015-02-19 | 2015-02-23 |  | All; Tim | 48h |
| 42 | 7.3 | Finish Preliminary Design for Linking Interface (Full Schematic Level) | manual | 5d | 2015-02-17 | 2015-02-23 |  | Tim | 40h |
| 43 | 7.4 | Finish Linking Interface Capture | manual | 3d | 2015-02-24 | 2015-02-26 | 42 | Tim | 24h |
| 44 | 7.5 | Finish Linking Interface Layout | manual | 4d | 2015-02-27 | 2015-03-04 | 43 | Tim | 32h |
| 45 | 7.6 | Construct BOM/Order parts | manual | 3d | 2015-03-06 | 2015-03-10 | 44 | Tim | 24h |
| 46 | 7.7 | Construct Linking Interface Prototype | manual | 4d | 2015-03-11 | 2015-03-16 |  | Tim | 32h |
| 47 | 7.8 | Design Preliminary Linking Interface Case | manual | 4d | 2015-03-17 | 2015-03-20 |  | Tim | 32h |
| 48 | 7.9 | Make Linking Interface Controller Revisions | manual | 5d | 2015-04-07 | 2015-04-13 | 92 | Tim | 40h |
| 49 | 7.10 | Send Files to Baord House forLinkingInterface-V2.0 | manual | 3d | 2015-04-14 | 2015-04-16 |  | Tim | 24h |
| 50 | 7.11 | Populate New Linking Interface Board | manual | 3d | 2015-04-17 | 2015-04-21 |  | Tim | 24h |
| 51 | 7.12 | Integrate Linking Interface with DTMF Controller | manual | 2d | 2015-03-16 | 2015-03-17 |  | Luis | 16h |
| 52 | 7.13 | Decide on SBC for Allstar (and ORDER it!) | manual | 4d | 2015-02-17 | 2015-02-20 |  | All | 32h |
| 53 | 7.14 | Finish Asterisk/app-rpt installation | manual | 4d | 2015-02-26 | 2015-03-03 |  | Luis | 32h |
| 54 | 7.15 | Aquire AllStar Node Number? | manual | 2d | 2015-03-02 | 2015-03-03 |  | Luis | 16h |
| 55 | 7.16 | Get working AllStar Node | manual | 2d | 2015-03-04 | 2015-03-05 | 54 | Luis | 16h |
| 56 | 7.17 | Finish Script for PTT control signals between nodes | manual | 3d | 2015-03-06 | 2015-03-10 | 55 | Luis | 24h |
| 57 | 7.18 | Integrate AllStar and Echolink nodes with Interface | manual | 3d | 2015-03-16 | 2015-03-18 | 54 | Tim; Luis | 48h |
| 58 | 7.19 | Have node/DTMF system up and running | manual | 3d | 2015-03-18 | 2015-03-20 |  | Luis | 24h |
| 59 | 7.20 | Complete Solidworks Model of Node System Case | manual | 4d | 2015-03-09 | 2015-03-12 |  | Luis | 32h |
| 60 | 7.21 | Construct BOM, and Order Parts for Node System Case | manual | 2d | 2015-03-13 | 2015-03-16 | 59 | Luis | 16h |
| 61 | 7.22 | Finish Construction of Node System Case Prototype | manual | 4d | 2015-03-17 | 2015-03-20 | 60 | Luis | 32h |

| ID | WBS | Task | Type | Duration | Start | Finish | Predecessors | Resources | Work |
| --- | --- | --- | --- | --- | --- | --- | --- | --- | --- |
| 62 | 8 | **Echo/AllStar Testing** |  | 25d | 2015-02-23 | 2015-03-27 |  |  | 216h |
| 63 | 8.1 | Test Echolink and AllStar Nodes | manual | 3d | 2015-02-27 | 2015-03-03 | 1 | Luis; Tim | 48h |
| 64 | 8.2 | Offsite test nodes, and switching system | manual | 8d | 2015-03-04 | 2015-03-13 | 63 | All | 64h |
| 65 | 8.3 | Make revisions/Construct v1.1 | manual | 3d | 2015-03-16 | 2015-03-18 | 64 | Luis; Tim | 48h |
| 66 | 8.4 | Offsite test v1.1 nodes, and switching system | manual | 7d | 2015-03-19 | 2015-03-27 | 65 | All | 56h |
| 67 | 9 | **DTMF/Switching Circuit Design/Implementation** |  | 71d | 2015-01-19 | 2015-04-25 |  | Kevin; Luis; Tim | 2480h |
| 68 | 9.1 | Finish DTMF Controller Capture | manual | 3d | 2015-02-17 | 2015-02-19 |  | Luis | 24h |
| 69 | 9.2 | Finish DTMF Controller Layout | manual | 2d | 2015-02-20 | 2015-02-23 |  | Luis | 16h |
| 70 | 9.3 | Finish DTMF Controller BOM and Order Parts | manual | 2d | 2015-02-24 | 2015-02-25 |  | Luis | 16h |
| 71 | 9.4 | Construct prototype DTMF controller | manual | 3d | 2015-02-27 | 2015-03-03 |  | Luis | 24h |
| 72 | 9.5 | Add LCD Support to DTMFController Software | manual | 3d | 2015-02-20 | 2015-02-24 |  | Tim | 24h |
| 73 | 9.6 | Choose switch components | manual | 2d | 2015-01-15 | 2015-01-16 |  | Kevin | 16h |
| 74 | 9.7 | Design Switching Circuit | manual | 5d | 2015-01-20 | 2015-01-26 | 73 | Kevin | 40h |
| 75 | 9.8 | Finish Switching Circuit Capture | manual | 5d | 2015-02-02 | 2015-02-06 | 74 | Kevin | 40h |
| 76 | 9.9 | Finish Switching Circuit Layout | manual | 5d | 2015-02-09 | 2015-02-13 |  | Kevin | 40h |
| 77 | 9.10 | Construct Switching Circuit BOM/Order parts | manual | 4d | 2015-02-16 | 2015-02-19 | 75 | Kevin | 32h |
| 78 | 9.11 | Construct prototype switching board | manual | 6d | 2015-02-20 | 2015-02-27 | 77 | Kevin | 48h |
| 79 | 9.12 | Finish Preliminary Solidworks Design For Switch, DTMF Controller Cases | manual | 3d | 2015-03-09 | 2015-03-11 |  | Kevin | 24h |
| 80 | 9.13 | Construct BOM, and Order Parts Switch/DTMF System Cases | manual | 2d | 2015-03-12 | 2015-03-13 | 79 | Kevin | 16h |
| 81 | 9.14 | Finish Construction of Switch/DTMF Case Prototypes | manual | 4d | 2015-03-17 | 2015-03-20 | 80 | Kevin | 32h |
| 82 | 9.15 | Make Switching Circuit Revisions | manual | 5d | 2015-04-07 | 2015-04-13 | 92 | Kevin | 40h |
| 83 | 9.16 | Send Files to Baord House for SwitchingCircuit-V2.0 | manual | 3d | 2015-04-14 | 2015-04-16 |  | Kevin | 24h |
| 84 | 9.17 | Populate New Switching Circuit Board | manual | 3d | 2015-04-17 | 2015-04-21 |  | Kevin | 24h |
| 85 | 9.18 | Complete NEW DTMF controller software v1.0 | manual | 6d | 2015-02-04 | 2015-02-11 |  | Tim | 48h |
| 86 | 9.19 | Integrate Switching Sircuit with DTMF Controller | manual | 5d | 2015-02-26 | 2015-03-04 |  | Kevin; Luis | 80h |
| 87 | 9.20 | Make DTMF Controller Revisions | manual | 5d | 2015-04-07 | 2015-04-13 | 92 | Kevin; Luis; Tim | 120h |
| 88 | 9.21 | Send Files to Baord House for DTMF-V2.0 | manual | 3d | 2015-04-14 | 2015-04-16 |  | Luis | 24h |
| 89 | 9.22 | Populate New DTMF Board | manual | 3d | 2015-04-17 | 2015-04-21 |  | Luis | 24h |

| ID | WBS | Task | Type | Duration | Start | Finish |
| --- | --- | --- | --- | --- | --- | --- |
| 90 | 10 | **DTMF Testing** |  | 25d | 2015-03-09 | 2015-04-10 |
| 91 | 10.1 | Test prototype DTMF and switch | manual | 3d | 2015-03-03 | 2015-03-05 |
| 92 | 10.2 | Offsite test nodes, and switching system | manual | 3d | 2015-03-12 | 2015-03-16 |
